# 项目进度计划

Schedule from a web Gantt chart, 2024-05-29 to 2025-07-29.
Every day is a working day

## Schedule

| ID | WBS | Task | Duration | Start | Finish |
| --- | --- | --- | --- | --- | --- |
| 2 | 1 | **签订合同到安装调试 6个月** | 427d | 2024-05-29 | 2025-07-29 |
| 3 | 1.1 | 签合同 | 3d | 2024-05-29 | 2024-05-31 |
| 4 | 1.2 | 设备生产 | 30d | 2024-06-01 | 2024-06-30 |
| 5 | 1.3 | 勘察 | 15d | 2024-06-03 | 2024-06-17 |
| 6 | 1.4 | 施工方案设计 | 21d | 2024-06-18 | 2024-07-08 |
| 7 | 1.5 | 出厂验收 | 3d | 2024-06-28 | 2024-06-30 |
| 8 | 1.6 | 运输 | 10d | 2024-07-01 | 2024-07-10 |
| 9 | 1.7 | **安装调试** | 384d | 2024-07-11 | 2025-07-29 |
| 10 | 1.7.1 | 工程组1 | 127d | 2024-07-11 | 2024-11-14 |
| 11 | 1.7.2 | **高频地波雷达安装调试** | 1d | 2025-07-29 | 2025-07-29 |
| 12 | 1.7.2.1 | 自动气象站安装调试 | 1d | 2025-07-29 | 2025-07-29 |
| 13 | 1.7.2.2 | 视频监控安装调试 | 1d | 2025-07-29 | 2025-07-29 |
| 14 | 1.7.2.3 | 北斗终端调试接入 | 1d | 2025-07-29 | 2025-07-29 |
| 15 | 1.7.2.4 | VSAT小站安装调试 | 1d | 2025-07-29 | 2025-07-29 |
| 16 | 1.7.2.5 | KVM调试 | 1d | 2025-07-29 | 2025-07-29 |
| 17 | 1.7.2.6 | 运控装置安装调试 | 1d | 2025-07-29 | 2025-07-29 |
| 18 | 1.7.3 | 工程组2 | 127d | 2024-07-11 | 2024-11-14 |
| 19 | 1.7.4 | 工程组3 | 127d | 2024-07-11 | 2024-11-14 |
| 20 | 1.7.5 | 工程组4 | 127d | 2024-07-11 | 2024-11-14 |
| 21 | 1.7.6 | 系统联调 | 14d | 2024-11-15 | 2024-11-28 |
| 22 | 1.8 | 试运行 | 242d | 2024-11-29 | 2025-07-28 |
| 23 | 1.9 | 比测 | 90d | 2024-12-29 | 2025-03-28 |
| 24 | 1.10 | 验收 | 3d | 2025-07-26 | 2025-07-28 |
| 25 | 2 | 试运行到验收结束 8个月 | 243d | 2024-11-29 | 2025-07-29 |
| 26 | 3 | 质保 | 1d | 2025-07-29 | 2025-07-29 |
